# Maison d'éducation

Schedule from ProjectLibre, 2021-01-28 to 2021-03-30.

## Calendars

- Standard: Mon-Fri 08:00-12:00, 13:00-17:00; Sat-Sun off.

## Resources

| Resource | Rate |
| --- | --- |
| Non attribué |  |
| Chef de projet | 100 |
| Spécialiste système | 75 |
| Utilisateur Averti |  |
| Analyste Programmeur | 50 |
| AP2 | 50 |

## Schedule

| ID | WBS | Task | Duration | Start | Finish | Predecessors | Complete | Baseline start | Baseline finish | Baseline 1 start | Baseline 1 finish | Constraint | Resources |
| --- | --- | --- | --- | --- | --- | --- | --- | --- | --- | --- | --- | --- | --- |
| 1 | 1 | **Maison d'éducation** | 43.34d? | 2021-01-28 | 2021-03-30 |  | 32% | 2021-01-28 | 2021-03-24 | 2021-01-28 | 2021-04-19 |  |  |
| 2 | 1.1 | Etude préalable | 2.5d | 2021-01-28 | 2021-02-01 |  | 100% | 2021-01-28 | 2021-02-01 | 2021-01-28 | 2021-02-01 |  | Chef de projet |
| 3 | 1.2 | **Sous projet Placement** | 34.38d? | 2021-02-01 | 2021-03-19 |  | 49% | 2021-02-01 | 2021-03-08 | 2021-02-01 | 2021-04-12 |  |  |
| 4 | 1.2.1 | EP | 2.5d | 2021-02-01 | 2021-02-03 | 2 | 100% | 2021-02-01 | 2021-02-03 | 2021-02-01 | 2021-02-03 | start no earlier than 2021-02-01 | Chef de projet |
| 5 | 1.2.2 | Conception BD (ED) | 10d | 2021-02-04 | 2021-02-17 | 4 | 100% | 2021-02-04 | 2021-02-17 | 2021-02-04 | 2021-02-17 | start no earlier than 2021-01-29 | Spécialiste système |
| 6 | 1.2.3 | Fichier enfant (prog) | 1d | 2021-02-18 | 2021-02-18 | 5 | 100% | 2021-02-18 | 2021-02-18 | 2021-02-18 | 2021-02-18 |  | Analyste Programmeur |
| 7 | 1.2.4 | Fichier enfant 2 | 2.5d | 2021-03-02 | 2021-03-04 | 6FS+7d |  | 2021-03-02 | 2021-03-04 | 2021-03-02 | 2021-03-04 | start no earlier than 2021-02-22 | Analyste Programmeur [80%] |
| 8 | 1.2.5 | Affectation enfant famille (prog) | 6.25d? | 2021-03-05 | 2021-03-15 | 5 |  | 2021-02-23 | 2021-03-01 | 2021-03-15 | 2021-03-23 | start no earlier than 2021-03-05 | Analyste Programmeur [80%] |
| 9 | 1.2.6 | MAJ BD (départ) (prog) | 1.67d? | 2021-03-16 | 2021-03-17 | 5 |  | 2021-03-02 | 2021-03-04 | 2021-04-05 | 2021-04-08 | start no earlier than 2021-03-16 | Analyste Programmeur [80%]; Chef de projet |
| 10 | 1.2.7 | Test placement | 1.88d? | 2021-03-18 | 2021-03-19 | 8, 9, 6 |  | 2021-03-05 | 2021-03-08 | 2021-04-08 | 2021-04-12 | start no earlier than 2021-03-18 | Utilisateur Averti [80%] |
| 11 | 1.3 | **Sous projet suivi** | 36.38d | 2021-02-01 | 2021-03-23 |  | 42% | 2021-02-01 | 2021-03-09 | 2021-02-01 | 2021-03-12 |  |  |
| 12 | 1.3.1 | Gestion historique enfants (ED et prog) | 6.88d | 2021-03-15 | 2021-03-23 | 2 |  | 2021-03-05 | 2021-03-09 | 2021-03-09 | 2021-03-12 | start no earlier than 2021-03-15 | Spécialiste système [80%] |
| 13 | 1.3.2 | Planning visite (ED et prog) | 2.5d | 2021-02-01 | 2021-02-03 | 2 | 100% | 2021-02-01 | 2021-02-03 | 2021-02-01 | 2021-02-03 | start no earlier than 2021-01-29 | Spécialiste système; Analyste Programmeur |
| 14 | 1.4 | **Sous projet Famille** | 29.38d | 2021-02-04 | 2021-03-17 |  | 39% | 2021-02-04 | 2021-03-17 | 2021-02-04 | 2021-03-23 |  |  |
| 15 | 1.4.1 | EP | 2.5d | 2021-02-04 | 2021-02-08 | 2 | 100% | 2021-02-04 | 2021-02-08 | 2021-02-04 | 2021-02-08 | start no earlier than 2021-02-04 | Chef de projet |
| 16 | 1.4.2 | Conception BD (ED) | 8d | 2021-02-09 | 2021-02-18 | 15 | 100% | 2021-02-09 | 2021-02-26 | 2021-02-09 | 2021-02-18 | start no earlier than 2021-01-28 | Chef de projet |
| 17 | 1.4.3 | conception BD2 | 2d | 2021-03-04 | 2021-03-05 | 16FS+7d |  |  |  | 2021-03-08 | 2021-03-09 | start no earlier than 2021-03-04 | Chef de projet |
| 18 | 1.4.4 | Famille (prog) | 7.5d | 2021-03-03 | 2021-03-12 | 16 |  | 2021-02-26 | 2021-03-08 | 2021-02-26 | 2021-03-05 | start no earlier than 2021-03-03 | Spécialiste système [80%] |
| 19 | 1.4.5 | MAJ BD (prog) | 5d | 2021-03-09 | 2021-03-15 | 16 |  | 2021-03-08 | 2021-03-15 | 2021-03-10 | 2021-03-16 | start no earlier than 2021-03-09 | Chef de projet |
| 20 | 1.4.6 | Test famille | 1.88d | 2021-03-16 | 2021-03-17 | 19, 18 |  | 2021-03-15 | 2021-03-17 | 2021-03-22 | 2021-03-23 | start no earlier than 2021-03-16 | Utilisateur Averti [80%] |
| 21 | 1.5 | **Sous projet allocation** | 18.88d | 2021-02-18 | 2021-03-16 |  | 7% | 2021-02-18 | 2021-03-18 | 2021-02-18 | 2021-04-06 |  |  |
| 22 | 1.5.1 | Conceptiont BD compta (ED) | 1d | 2021-02-18 | 2021-02-18 | 2 | 100% | 2021-02-18 | 2021-02-18 | 2021-02-18 | 2021-02-18 | start no earlier than 2021-02-18 | Spécialiste système |
| 23 | 1.5.2 | Conception BD compta 2 | 4d | 2021-02-26 | 2021-03-03 | 22 |  | 2021-03-02 | 2021-03-08 | 2021-03-02 | 2021-03-08 | start no earlier than 2021-02-26 | Chef de projet |
| 24 | 1.5.3 | Procédure versement (prog) | 3.75d | 2021-03-03 | 2021-03-09 | 22 |  | 2021-03-10 | 2021-03-12 | 2021-03-29 | 2021-04-02 | start no earlier than 2021-03-03 | AP2 [80%] |
| 25 | 1.5.4 | Procédure arret (prog) | 3d | 2021-03-10 | 2021-03-12 | 22 |  | 2021-03-15 | 2021-03-17 | 2021-03-24 | 2021-03-29 | start no earlier than 2021-03-10 | AP2 [80%] |
| 26 | 1.5.5 | Tests alloc | 1.88d | 2021-03-15 | 2021-03-16 | 25, 24 |  | 2021-03-17 | 2021-03-18 | 2021-04-02 | 2021-04-06 |  | Utilisateur Averti [80%] |
| 27 | 1.6 | Intégration | 4.46d | 2021-03-23 | 2021-03-30 | 10, 20, 26, 13, 12 |  | 2021-03-19 | 2021-03-24 | 2021-04-12 | 2021-04-19 |  | Chef de projet; Analyste Programmeur [80%]; Spécialiste système [80%]; Utilisateur Averti [80%]; AP2 [80%] |
