# Maison d'éducation

Schedule from ProjectLibre, 2021-01-28 to 2021-03-26.

## Calendars

- Standard: Mon-Fri 08:00-12:00, 13:00-17:00; Sat-Sun off.

## Resources

| Resource | Rate |
| --- | --- |
| Non attribué |  |
| Chef projet | 100 |
| Spécialiste Systeme | 75 |
| Utilisateur Averti |  |
| Analyste programmeur | 50 |
| Analyste programmeur 2 | 50 |

## Schedule

| ID | WBS | Task | Duration | Start | Finish | Predecessors | Complete | Baseline start | Baseline finish | Baseline 1 start | Baseline 1 finish | Constraint | Resources |
| --- | --- | --- | --- | --- | --- | --- | --- | --- | --- | --- | --- | --- | --- |
| 1 | 1 | **Maison d'éducation** | 41.84d? | 2021-01-28 | 2021-03-26 |  | 33% | 2021-01-28 | 2021-03-24 | 2021-01-28 | 2021-03-31 | start no earlier than 2021-01-28 |  |
| 2 | 1.1 | Etude préalable | 2.5d | 2021-01-28 | 2021-02-01 |  | 100% | 2021-01-28 | 2021-02-01 | 2021-01-28 | 2021-02-01 | start no earlier than 2021-01-28 | Chef projet |
| 3 | 1.2 | **Sous projet placement** | 30.76d? | 2021-02-01 | 2021-03-16 |  | 48% | 2021-02-01 | 2021-03-08 | 2021-02-01 | 2021-03-24 |  |  |
| 4 | 1.2.1 | EP | 2.5d | 2021-02-01 | 2021-02-03 | 2 | 100% | 2021-02-01 | 2021-02-03 | 2021-02-01 | 2021-02-03 | start no earlier than 2021-02-01 | Chef projet |
| 5 | 1.2.2 | Conception (BD) enfant (ED) | 10d? | 2021-02-04 | 2021-02-17 | 4 | 100% | 2021-02-04 | 2021-02-17 | 2021-02-04 | 2021-02-17 |  | Spécialiste Systeme |
| 6 | 1.2.3 | fichier enfant (prog) | 1d? | 2021-02-18 | 2021-02-18 | 5 | 93% | 2021-02-18 | 2021-02-22 | 2021-02-18 | 2021-02-18 | start no earlier than 2021-02-02 | Analyste programmeur |
| 7 | 1.2.4 | Suite : fichier enfant (prog) | 1.39d? | 2021-03-11 | 2021-03-12 | 6 |  |  |  | 2021-03-18 | 2021-03-22 | start no earlier than 2021-03-11 | Analyste programmeur [80%]; Analyste programmeur 2 [80%] |
| 8 | 1.2.5 | affectation enfants familles | 3.47d? | 2021-02-26 | 2021-03-03 | 5 |  | 2021-02-23 | 2021-03-01 | 2021-02-26 | 2021-03-08 | start no earlier than 2021-02-26 | Analyste programmeur [80%]; Analyste programmeur 2 [80%] |
| 9 | 1.2.6 | MAJ BD (depart) enfants (prog) | 2.08d? | 2021-03-03 | 2021-03-05 | 5 |  | 2021-03-02 | 2021-03-04 | 2021-03-08 | 2021-03-12 | start no earlier than 2021-03-03 | Analyste programmeur [80%]; Analyste programmeur 2 [80%] |
| 10 | 1.2.7 | test placement | 1.88d | 2021-03-12 | 2021-03-16 | 7, 8, 9 |  | 2021-03-05 | 2021-03-08 | 2021-03-23 | 2021-03-24 | start no earlier than 2021-03-12 | Utilisateur Averti [80%] |
| 11 | 1.3 | **sous projet suivi** | 27.56d? | 2021-02-01 | 2021-03-11 |  | 42% | 2021-02-01 | 2021-03-09 | 2021-02-01 | 2021-03-18 |  |  |
| 12 | 1.3.1 | gestion d'1 historique enfant (ed et prog) | 3.44d? | 2021-03-05 | 2021-03-11 | 2 |  | 2021-03-05 | 2021-03-09 | 2021-03-15 | 2021-03-18 | start no earlier than 2021-03-05 | Analyste programmeur [80%]; Spécialiste Systeme [80%] |
| 13 | 1.3.2 | planning des visites (ed et prog) | 2.5d | 2021-02-01 | 2021-02-03 | 2 | 100% | 2021-02-01 | 2021-02-03 | 2021-02-01 | 2021-02-03 |  | Spécialiste Systeme; Analyste programmeur |
| 14 | 1.4 | **sous projet familles d'accueil** | 32.38d? | 2021-02-04 | 2021-03-22 |  | 39% | 2021-02-04 | 2021-03-16 | 2021-02-04 | 2021-03-22 | start no earlier than 2021-02-04 |  |
| 15 | 1.4.1 | ep | 2.5d | 2021-02-04 | 2021-02-08 | 2 | 100% | 2021-02-04 | 2021-02-08 | 2021-02-04 | 2021-02-08 | start no earlier than 2021-02-04 | Chef projet |
| 16 | 1.4.2 | Conception bd famille (ed) | 8d | 2021-02-09 | 2021-02-18 | 15 | 100% | 2021-02-09 | 2021-02-26 | 2021-02-09 | 2021-02-18 | start no earlier than 2021-02-09 | Chef projet [75%] |
| 17 | 1.4.3 | Suite : Conception bd famille (ed) | 3.35d? | 2021-02-26 | 2021-03-03 | 16 |  |  |  | 2021-02-26 | 2021-03-03 | start no earlier than 2021-02-26 | Chef projet |
| 18 | 1.4.4 | fichier famille (prog) | 6d | 2021-03-10 | 2021-03-18 | 17 |  | 2021-02-26 | 2021-03-08 | 2021-03-10 | 2021-03-18 | start no earlier than 2021-03-10 | Chef projet |
| 19 | 1.4.5 | maj bd recrutement, renouvellement: (prog) test | 5d | 2021-03-03 | 2021-03-10 | 16 |  | 2021-02-26 | 2021-03-05 | 2021-03-03 | 2021-03-10 | start no earlier than 2021-03-03 | Chef projet |
| 20 | 1.4.6 | test | 1.88d | 2021-03-18 | 2021-03-22 | 18, 19 |  | 2021-03-15 | 2021-03-16 | 2021-03-19 | 2021-03-22 | start no earlier than 2021-03-16 | Utilisateur Averti [80%] |
| 21 | 1.5 | **sous projet allocations** | 21d? | 2021-02-18 | 2021-03-18 |  | 8% | 2021-02-18 | 2021-03-18 | 2021-02-18 | 2021-03-18 |  |  |
| 22 | 1.5.1 | conception bd compta (ed) | 5d? | 2021-02-18 | 2021-02-24 | 2 | 20% | 2021-02-18 | 2021-02-24 | 2021-02-18 | 2021-02-24 | start no earlier than 2021-02-18 | Spécialiste Systeme |
| 23 | 1.5.2 | Procédure de versement (prog) | 3d | 2021-03-10 | 2021-03-12 | 22 |  | 2021-03-10 | 2021-03-12 | 2021-03-10 | 2021-03-12 | start no earlier than 2021-03-10 | Analyste programmeur |
| 24 | 1.5.3 | Procédure de mise a jour (arrêt, modification) | 2.5d | 2021-03-15 | 2021-03-17 | 22 |  | 2021-03-15 | 2021-03-17 | 2021-03-15 | 2021-03-17 | start no earlier than 2021-03-15 | Analyste programmeur |
| 25 | 1.5.4 | Test | 1.5d | 2021-03-17 | 2021-03-18 | 23, 24 |  | 2021-03-17 | 2021-03-18 | 2021-03-17 | 2021-03-18 |  | Utilisateur Averti |
| 26 | 1.6 | Intégration | 4.46d | 2021-03-22 | 2021-03-26 | 10, 20, 12, 13, 25 |  | 2021-03-19 | 2021-03-24 | 2021-03-24 | 2021-03-31 | start no earlier than 2021-03-18 | Chef projet; Spécialiste Systeme [80%]; Utilisateur Averti [80%]; Analyste programmeur [80%]; Analyste programmeur 2 [80%] |
